# Residential Construction

Schedule from MS Project, 2020-12-09 to 2021-06-09, costs in €.

## Calendars

- Standard: Mon-Fri 08:00-12:00, 13:00-17:00; Sat-Sun off.

## Resources

| Resource | Rate |
| --- | --- |
| Concrete contractor | 200 |
| Finish carpentry contractor | 150 |
| Fencing contractor | 100 |
| Masonry contractor | 120 |
| General contractor | 120 |
| Architect | 150 |
| Owner | 20 |
| Mortgage lender | 20 |
| Inspector | 50 |
| Electric company | 150 |
| Site excavation contractor | 250 |
| Electric contractor | 200 |
| Plumbing contractor | 150 |
| Framing contractor | 120 |
| Roofing contractor | 120 |
| Heating and AC contractor | 150 |
| Insulation contractor | 120 |
| Drywall contractor | 100 |
| Painting contractor | 100 |
| Flooring contractor | 100 |
| Appliance contractor | 100 |
| Landscape contractor | 160 |
| Cleaning Contractor | 120 |

## Schedule

| ID | WBS | Task | Duration | Start | Finish | Predecessors | Total slack | Free slack | Resources | Work | Cost |
| --- | --- | --- | --- | --- | --- | --- | --- | --- | --- | --- | --- |
| 1 | 1 | **General Conditions** | 21d | 2020-12-09 | 2021-01-06 |  | 110d |  |  | 230.4h | 24,848 |
| 2 | 1.1 | Finalize plans and develop estimate with owner, architect | 20d | 2020-12-09 | 2021-01-05 |  | 110d | 0d | General contractor [50%]; Architect [50%]; Owner [12%]; Mortgage lender [12%] | 198.4h | 22,368 |
| 3 | 1.2 | Sign contract and notice to proceed | 1d | 2021-01-06 | 2021-01-06 | 2 | 110d |  | General contractor; Architect; Owner; Mortgage lender | 32h | 2,480 |
| 4 | 2 | **Site Work** | 3d | 2020-12-09 | 2020-12-11 |  | 0d |  |  | 32h | 6,000 |
| 5 | 2.1 | Clear and grub lot | 1d | 2020-12-09 | 2020-12-09 |  | 0d |  | Site excavation contractor | 8h | 2,000 |
| 6 | 2.2 | Install temporary power service | 1d | 2020-12-10 | 2020-12-10 | 5 | 0d |  | Electric company | 8h | 1,200 |
| 7 | 2.3 | Install underground utilities | 1d | 2020-12-11 | 2020-12-11 | 6 | 0d |  | Electric contractor; Plumbing contractor | 16h | 2,800 |
| 8 | 3 | **Foundation** | 42d | 2020-12-14 | 2021-02-09 |  | 0d |  |  | 280h | 56,800 |
| 9 | 3.1 | Excavate for foundations | 3d | 2020-12-14 | 2020-12-16 | 7 | 0d |  | Site excavation contractor | 24h | 6,000 |
| 10 | 3.2 | Form basement walls | 13d | 2020-12-17 | 2021-01-04 | 9 | 0d |  | Concrete contractor | 104h | 20,800 |
| 11 | 3.3 | Place concrete for foundations & basement walls | 12d | 2021-01-05 | 2021-01-20 | 10 | 0d |  | Concrete contractor | 96h | 19,200 |
| 12 | 3.4 | Cure basement walls for 7 days | 7d | 2021-01-21 | 2021-01-29 | 11 | 0d |  |  |  |  |
| 13 | 3.5 | Strip basement wall forms | 2d | 2021-02-01 | 2021-02-02 | 12 | 0d |  | Concrete contractor | 16h | 3,200 |
| 14 | 3.6 | Waterproof/insulate basement walls | 2d | 2021-02-03 | 2021-02-04 | 13 | 0d |  | Concrete contractor | 16h | 3,200 |
| 15 | 3.7 | Perform foundation inspection | 1d | 2021-02-05 | 2021-02-05 | 14, 9 | 0d |  | Inspector | 8h | 400 |
| 16 | 3.8 | Backfill foundation | 2d | 2021-02-08 | 2021-02-09 | 15 | 0d |  | Site excavation contractor | 16h | 4,000 |
| 17 | 4 | **Framing** | 22d | 2021-02-10 | 2021-03-11 |  | 0d |  |  | 176h | 20,560 |
| 18 | 4.1 | Install 1st floor joists | 2d | 2021-02-10 | 2021-02-11 | 16 | 0d |  | Framing contractor | 16h | 1,920 |
| 19 | 4.2 | Lay 1st floor decking | 2d | 2021-02-12 | 2021-02-15 | 18 | 0d |  | Framing contractor | 16h | 1,920 |
| 20 | 4.3 | Frame 1st floor walls | 4d | 2021-02-16 | 2021-02-19 | 19 | 0d |  | Framing contractor | 32h | 3,840 |
| 21 | 4.4 | Frame 1st floor corners | 1d | 2021-02-22 | 2021-02-22 | 20 | 0d |  | Framing contractor | 8h | 960 |
| 22 | 4.5 | Install 2nd floor joists | 2d | 2021-02-23 | 2021-02-24 | 21 | 0d |  | Framing contractor | 16h | 1,920 |
| 23 | 4.6 | Frame 2nd floor decking | 2d | 2021-02-25 | 2021-02-26 | 22 | 0d |  | Framing contractor | 16h | 1,920 |
| 24 | 4.7 | Frame 2nd floor walls | 3d | 2021-03-01 | 2021-03-03 | 23 | 0d |  | Framing contractor | 24h | 2,880 |
| 25 | 4.8 | Frame 2nd floor corners | 2d | 2021-03-04 | 2021-03-05 | 24 | 0d |  | Framing contractor | 16h | 1,920 |
| 26 | 4.9 | Complete roof framing | 3d | 2021-03-08 | 2021-03-10 | 25 | 0d |  | Framing contractor | 24h | 2,880 |
| 27 | 4.10 | Conduct framing inspection | 1d | 2021-03-11 | 2021-03-11 | 26 | 0d |  | Inspector | 8h | 400 |

| ID | WBS | Task | Duration | Start | Finish | Predecessors | Total slack | Free slack | Resources | Work | Cost |
| --- | --- | --- | --- | --- | --- | --- | --- | --- | --- | --- | --- |
| 28 | 5 | **Dry In** | 22d | 2021-03-11 | 2021-04-09 |  | 0d |  |  | 152h | 18,240 |
| 29 | 5.1 | Install 1st floor sheathing | 3d | 2021-03-12 | 2021-03-16 | 27 | 0d |  | Framing contractor | 24h | 2,880 |
| 30 | 5.2 | Install 2nd floor sheathing | 3d | 2021-03-17 | 2021-03-19 | 29 | 0d |  | Framing contractor | 24h | 2,880 |
| 31 | 5.3 | Install roof decking | 3d | 2021-03-11 | 2021-03-15 | 26 | 4d | 0d | Framing contractor | 24h | 2,880 |
| 32 | 5.4 | Install felt, flashing and shingles | 3d | 2021-03-29 | 2021-03-31 | 40 | 0d |  | Roofing contractor | 24h | 2,880 |
| 33 | 5.5 | Hang 1st floor exterior doors | 1d | 2021-04-01 | 2021-04-01 | 32 | 0d |  | Framing contractor | 8h | 960 |
| 34 | 5.6 | Install 1st floor windows | 3d | 2021-04-02 | 2021-04-06 | 33 | 0d |  | Framing contractor | 24h | 2,880 |
| 35 | 5.7 | Install 2nd floor windows | 3d | 2021-04-07 | 2021-04-09 | 34 | 0d |  | Framing contractor | 24h | 2,880 |
| 36 | 6 | **Exterior Finishes** | 19d | 2021-04-12 | 2021-05-06 |  | 5d |  |  | 152h | 18,240 |
| 37 | 6.1 | Complete exterior brick | 16d | 2021-04-12 | 2021-05-03 | 35 | 5d | 0d | Masonry contractor | 128h | 15,360 |
| 38 | 6.2 | Complete exterior siding | 3d | 2021-05-04 | 2021-05-06 | 37 | 5d | 0d | Framing contractor | 24h | 2,880 |
| 39 | 7 | **Utility Rough-B97Ins and Complete Concrete** | 21d | 2021-03-16 | 2021-04-13 |  | 4d |  |  | 232h | 39,600 |
| 40 | 7.1 | Rough-in plumbing | 5d | 2021-03-22 | 2021-03-26 | 31, 30 | 0d |  | Plumbing contractor | 40h | 6,000 |
| 41 | 7.2 | Conduct rough-in plumbing inspection | 1d | 2021-03-29 | 2021-03-29 | 40 | 20d | 0d | Inspector | 8h | 400 |
| 42 | 7.3 | Place concrete for basement floor | 11d | 2021-03-30 | 2021-04-13 | 41 | 33d |  | Concrete contractor | 88h | 17,600 |
| 43 | 7.4 | Rough-in electrical | 5d | 2021-03-22 | 2021-03-26 | 31, 30 | 6d | 0d | Electric contractor | 40h | 8,000 |
| 44 | 7.5 | Conduct rough-in electrical inspection | 1d | 2021-03-29 | 2021-03-29 | 43 | 6d | 0d | Inspector | 8h | 400 |
| 45 | 7.6 | Rough-in HVAC | 3d | 2021-03-30 | 2021-04-01 | 44 | 6d | 0d | Heating and AC contractor | 24h | 3,600 |
| 46 | 7.7 | Conduct rough-in HVAC inspection | 1d | 2021-04-02 | 2021-04-02 | 45 | 24d |  | Inspector | 8h | 400 |
| 47 | 7.8 | Rough-in communication - phone, cable, computer, alarm | 2d | 2021-03-16 | 2021-03-17 | 31 | 17d |  | Electric contractor | 16h | 3,200 |
| 48 | 8 | **Interior Finishes** | 30d | 2021-04-12 | 2021-05-21 |  | 0d |  |  | 408h | 48,080 |
| 49 | 8.1 | **Insulation** | 11d | 2021-04-12 | 2021-04-26 |  | 0d |  |  | 32h | 3,280 |
| 50 | 8.1.1 | Place wall insulation - 1st floor | 1d | 2021-04-12 | 2021-04-12 | 29, 35, 47, 45, 43, 30 | 0d |  | Insulation contractor | 8h | 960 |
| 51 | 8.1.2 | Place wall insulation - 2nd floor | 1d | 2021-04-13 | 2021-04-13 | 50 | 27d | 3d | Insulation contractor | 8h | 960 |
| 52 | 8.1.3 | Place ceiling insulation - 2nd floor | 1d | 2021-04-23 | 2021-04-23 | 58, 51 | 24d | 0d | Insulation contractor | 8h | 960 |
| 53 | 8.1.4 | Conduct insulation inspection | 1d | 2021-04-26 | 2021-04-26 | 52 | 24d |  | Inspector | 8h | 400 |

| ID | WBS | Task | Duration | Start | Finish | Predecessors | Total slack | Free slack | Resources | Work | Cost |
| --- | --- | --- | --- | --- | --- | --- | --- | --- | --- | --- | --- |
| 54 | 8.2 | **Drywall** | 9d | 2021-04-13 | 2021-04-23 |  | 0d |  |  | 80h | 8,000 |
| 55 | 8.2.1 | Install drywall - 1st floor walls | 2d | 2021-04-13 | 2021-04-14 | 50 | 0d |  | Drywall contractor | 16h | 1,600 |
| 56 | 8.2.2 | Install drywall - 1st floor overhead | 2d | 2021-04-15 | 2021-04-16 | 55 | 0d |  | Drywall contractor | 16h | 1,600 |
| 57 | 8.2.3 | Install drywall 2nd floor walls | 2d | 2021-04-19 | 2021-04-20 | 56, 51 | 24d | 0d | Drywall contractor | 16h | 1,600 |
| 58 | 8.2.4 | Install drywall 2nd floor overhead | 2d | 2021-04-21 | 2021-04-22 | 57 | 24d | 0d | Drywall contractor | 16h | 1,600 |
| 59 | 8.2.5 | Tape and float 1st floor drywall | 1d | 2021-04-19 | 2021-04-19 | 56 | 0d |  | Drywall contractor | 8h | 800 |
| 60 | 8.2.6 | Tape and float 2nd floor drywall | 1d | 2021-04-23 | 2021-04-23 | 58, 59 | 33d |  | Drywall contractor | 8h | 800 |
| 61 | 8.3 | **Paint and Wallpaper** | 17d | 2021-04-20 | 2021-05-12 |  | 0d |  |  | 72h | 7,200 |
| 62 | 8.3.1 | Texture all except entry and kitchen - 1st floor | 1d | 2021-04-20 | 2021-04-20 | 59 | 0d |  | Painting contractor | 8h | 800 |
| 63 | 8.3.2 | Paint all except entry and kitchen - 1st floor | 1d | 2021-04-21 | 2021-04-21 | 62 | 0d |  | Painting contractor | 8h | 800 |
| 64 | 8.3.3 | Hang wallpaper entry and kitchen - 1st floor | 1d | 2021-04-22 | 2021-04-22 | 63 | 0d |  | Painting contractor | 8h | 800 |
| 65 | 8.3.4 | Texture all - 2nd floor | 1d | 2021-04-21 | 2021-04-21 | 62 | 34d | 0d | Painting contractor | 8h | 800 |
| 66 | 8.3.5 | Paint all - 2nd floor | 1d | 2021-04-22 | 2021-04-22 | 65 | 34d |  | Painting contractor | 8h | 800 |
| 67 | 8.3.6 | Paint exterior siding & trim work | 4d | 2021-05-07 | 2021-05-12 | 38 | 5d | 0d | Painting contractor | 32h | 3,200 |
| 68 | 8.4 | **Cabinets** | 6d | 2021-04-23 | 2021-04-30 |  | 0d |  |  | 48h | 7,200 |
| 69 | 8.4.1 | Install 1st floor - kitchen cabinets | 2d | 2021-04-23 | 2021-04-26 | 64 | 0d |  | Finish carpentry contractor | 16h | 2,400 |
| 70 | 8.4.2 | Install 1st floor - master bath and guest cabinets | 1d | 2021-04-27 | 2021-04-27 | 69 | 0d |  | Finish carpentry contractor | 8h | 1,200 |
| 71 | 8.4.3 | Install 2nd floor - hall bath and private bath cabinets | 1d | 2021-04-28 | 2021-04-28 | 70 | 1d | 0d | Finish carpentry contractor | 8h | 1,200 |
| 72 | 8.4.4 | Install chair rails, crown moldings, trim | 2d | 2021-04-29 | 2021-04-30 | 71 | 20d |  | Finish carpentry contractor | 16h | 2,400 |
| 73 | 8.5 | **Finish Plumbing** | 6d | 2021-04-27 | 2021-05-04 |  | 0d |  |  | 48h | 6,400 |
| 74 | 8.5.1 | Complete 1st floor - kitchen plumbing | 1d | 2021-04-27 | 2021-04-27 | 69, 41 | 0d |  | Plumbing contractor | 8h | 1,200 |
| 75 | 8.5.2 | Complete 1st floor - master bath and guest plumbing | 2d | 2021-04-28 | 2021-04-29 | 74, 70 | 0d |  | Plumbing contractor | 16h | 2,400 |
| 76 | 8.5.3 | Complete 2nd floor - hall bath and private bath plumbing | 2d | 2021-04-30 | 2021-05-03 | 75, 71 | 0d |  | Plumbing contractor | 16h | 2,400 |
| 77 | 8.5.4 | Conduct finish plumbing inspection | 1d | 2021-05-04 | 2021-05-04 | 76 | 0d |  | Inspector | 8h | 400 |

| ID | WBS | Task | Duration | Start | Finish | Predecessors | Total slack | Free slack | Resources | Work | Cost |
| --- | --- | --- | --- | --- | --- | --- | --- | --- | --- | --- | --- |
| 78 | 8.6 | **Finish Electrical** | 3d | 2021-05-04 | 2021-05-06 |  | 1d |  |  | 40h | 6,800 |
| 79 | 8.6.1 | Complete 1st floor circuits to service panel | 1d | 2021-05-04 | 2021-05-04 | 76, 44 | 3d | 0d | Electric contractor | 8h | 1,600 |
| 80 | 8.6.2 | Complete 2nd floor circuits to service panel | 1d | 2021-05-05 | 2021-05-05 | 79 | 3d | 0d | Electric contractor | 8h | 1,600 |
| 81 | 8.6.3 | Conduct finish electrical inspection | 1d | 2021-05-06 | 2021-05-06 | 80 | 3d |  | Inspector | 8h | 400 |
| 82 | 8.6.4 | Complete communications wiring - phone, cable, computer, alarm | 2d | 2021-05-05 | 2021-05-06 | 77 | 0d |  | Electric contractor | 16h | 3,200 |
| 83 | 8.7 | **Finish HVAC** | 3d | 2021-05-07 | 2021-05-11 |  | 0d |  |  | 24h | 2,800 |
| 84 | 8.7.1 | Complete 1st floor - zone 1 HVAC | 1d | 2021-05-07 | 2021-05-07 | 82, 46 | 0d |  | Heating and AC contractor | 8h | 1,200 |
| 85 | 8.7.2 | Complete 2nd floor - zone 2 HVAC | 1d | 2021-05-10 | 2021-05-10 | 84 | 0d |  | Heating and AC contractor | 8h | 1,200 |
| 86 | 8.7.3 | Conduct HVAC inspection | 1d | 2021-05-11 | 2021-05-11 | 85 | 0d |  | Inspector | 8h | 400 |
| 87 | 8.8 | **Carpet, Tile and Appliances** | 8d | 2021-05-12 | 2021-05-21 |  | 0d |  |  | 64h | 6,400 |
| 88 | 8.8.1 | Tile entry, kitchen and baths | 3d | 2021-05-12 | 2021-05-14 | 81, 86 | 0d |  | Flooring contractor | 24h | 2,400 |
| 89 | 8.8.2 | Carpet 1st floor | 2d | 2021-05-17 | 2021-05-18 | 88 | 0d |  | Flooring contractor | 16h | 1,600 |
| 90 | 8.8.3 | Carpet 2nd floor | 2d | 2021-05-19 | 2021-05-20 | 89 | 0d |  | Flooring contractor | 16h | 1,600 |
| 91 | 8.8.4 | Install appliances | 1d | 2021-05-21 | 2021-05-21 | 90 | 0d |  | Appliance contractor | 8h | 800 |
| 92 | 9 | **Landscaping and Grounds Work** | 12d | 2021-05-13 | 2021-05-28 |  | 0d |  |  | 56h | 8,640 |
| 93 | 9.1 | Pour concrete driveway and sidewalks | 2d | 2021-05-13 | 2021-05-14 | 67 | 5d |  | Concrete contractor | 16h | 3,200 |
| 94 | 9.2 | Install backyard fence | 2d | 2021-05-24 | 2021-05-25 | 91, 93 | 0d |  | Fencing contractor | 16h | 1,600 |
| 95 | 9.3 | Sod and complete plantings - front yard | 2d | 2021-05-26 | 2021-05-27 | 94 | 0d |  | Landscape contractor | 16h | 2,560 |
| 96 | 9.4 | Sod and complete plantings - backyard | 1d | 2021-05-28 | 2021-05-28 | 95 | 0d |  | Landscape contractor | 8h | 1,280 |
| 97 | 10 | **Final Acceptance** | 8d | 2021-05-31 | 2021-06-09 |  | 0d |  |  | 64h | 6,320 |
| 98 | 10.1 | Complete final inspection for certificate of occupancy | 1d | 2021-05-31 | 2021-05-31 | 96, 86, 81, 77, 53, 72, 42 | 0d |  | Inspector | 8h | 400 |
| 99 | 10.2 | Cleanup for occupancy | 1d | 2021-06-01 | 2021-06-01 | 91, 98 | 0d |  | Cleaning Contractor | 8h | 960 |
| 100 | 10.3 | Perform final walk-through inspection | 1d | 2021-06-02 | 2021-06-02 | 99 | 0d |  | Owner | 8h | 160 |
| 101 | 10.4 | Complete punch list items | 5d | 2021-06-03 | 2021-06-09 | 100 | 0d |  | General contractor | 40h | 4,800 |
